# WBS

Schedule from MS Project, 2020-03-05 to 2020-09-05, costs in ¥, A marks actual dates.

## Calendars

- 标准: Mon-Fri 08:00-12:00, 13:00-17:00; Sat 08:00-13:00, 14:00-17:00; Sun off.

## Resources

| Resource | Rate | Notes |
| --- | --- | --- |
| 任翔渝 | 100 | 项目经理、风险管理人员 |
| 张佳明 | 100 | 系统分析员 |
| 刘震宇 | 100 | 系统设计员 |
| 饶东来 | 100 | 数据库管理员 |
| 徐靖垚 | 100 | 程序员 |
| 冯开宇 | 100 | 程序员 |
| 李金 | 100 | 程序员 |
| 彭威 | 100 | 程序员 |
| 张鉴昊 | 100 | 测试人员 |
| 张航 | 100 | 质量管理、配置管理人员 |

## Schedule

| ID | WBS | Task | Duration | Start | Finish | Predecessors | Complete | Remaining | Total slack | Resources | Work | Actual work | Cost | Actual cost |
| --- | --- | --- | --- | --- | --- | --- | --- | --- | --- | --- | --- | --- | --- | --- |
| 1 | 1 | **项目规划** | 30d | 2020-03-05 A | 2020-04-08 A |  | 100% |  |  |  | 392h | 392h | 39,200 | 39,200 |
| 2 | 1.1 | **合同签订** | 7d | 2020-03-05 A | 2020-03-12 A |  | 100% |  |  |  | 168h | 168h | 16,800 | 16,800 |
| 3 | 1.1.1 | 合同拟定 | 6d | 2020-03-05 A | 2020-03-11 A |  | 100% |  |  | 任翔渝; 张佳明; 刘震宇 | 144h | 144h | 14,400 | 14,400 |
| 4 | 1.1.2 | 合同签署 | 1d | 2020-03-12 A | 2020-03-12 A | 3 | 100% |  |  | 任翔渝; 张佳明; 刘震宇 | 24h | 24h | 2,400 | 2,400 |
| 5 | 1.2 | **项目计划阶段** | 14d | 2020-03-24 A | 2020-04-08 A | 25 | 100% |  |  |  | 224h | 224h | 22,400 | 22,400 |
| 6 | 1.2.1 | 项目范围计划 | 1d | 2020-03-24 A | 2020-03-24 A |  | 100% |  |  | 任翔渝; 张航 | 16h | 16h | 1,600 | 1,600 |
| 7 | 1.2.2 | 项目进度计划 | 2d | 2020-03-25 A | 2020-03-26 A | 6 | 100% |  |  | 任翔渝; 张航 | 32h | 32h | 3,200 | 3,200 |
| 8 | 1.2.3 | 项目成本计划 | 2d | 2020-03-27 A | 2020-03-28 A | 7 | 100% |  |  | 任翔渝; 张航 | 32h | 32h | 3,200 | 3,200 |
| 9 | 1.2.4 | 项目质量计划 | 2d | 2020-03-30 A | 2020-03-31 A | 8 | 100% |  |  | 任翔渝; 张航 | 32h | 32h | 3,200 | 3,200 |
| 10 | 1.2.5 | 人力资源计划 | 1d | 2020-04-01 A | 2020-04-01 A | 9 | 100% |  |  | 任翔渝; 张航 | 16h | 16h | 1,600 | 1,600 |
| 11 | 1.2.6 | 项目沟通计划 | 1d | 2020-04-02 A | 2020-04-02 A | 10 | 100% |  |  | 任翔渝; 张航 | 16h | 16h | 1,600 | 1,600 |
| 12 | 1.2.7 | 项目风险计划 | 1d | 2020-04-03 A | 2020-04-03 A | 11 | 100% |  |  | 任翔渝; 张航 | 16h | 16h | 1,600 | 1,600 |
| 13 | 1.2.8 | 项目合同计划 | 1d | 2020-04-04 A | 2020-04-04 A | 12 | 100% |  |  | 任翔渝; 张航 | 16h | 16h | 1,600 | 1,600 |
| 14 | 1.2.9 | 配置管理计划 | 1d | 2020-04-06 A | 2020-04-06 A | 13 | 100% |  |  | 任翔渝; 张航 | 16h | 16h | 1,600 | 1,600 |
| 15 | 1.2.10 | 集成项目计划 | 1d | 2020-04-07 A | 2020-04-07 A | 14 | 100% |  |  | 任翔渝; 张航 | 16h | 16h | 1,600 | 1,600 |
| 16 | 1.2.11 | 项目计划发布 | 1d | 2020-04-08 A | 2020-04-08 A | 15 | 100% |  |  | 任翔渝; 张航 | 16h | 16h | 1,600 | 1,600 |
| 17 | 2 | **需求分析** | 127d | 2020-03-13 A | 2020-08-07 | 4 | 6% | 118.95d | 25d |  | 2200h | 72h | 220,000 | 7,200 |
| 18 | 2.1 | **需求开发** | 8d | 2020-03-13 A | 2020-03-21 A |  | 100% |  |  |  | 64h | 64h | 6,400 | 6,400 |
| 19 | 2.1.1 | 需求获取 | 3d | 2020-03-13 A | 2020-03-16 A |  | 100% |  |  | 张佳明 | 24h | 24h | 2,400 | 2,400 |
| 20 | 2.1.2 | 需求分析 | 3d | 2020-03-17 A | 2020-03-19 A | 19 | 100% |  |  | 张佳明 | 24h | 24h | 2,400 | 2,400 |
| 21 | 2.1.3 | 需求验证 | 2d | 2020-03-20 A | 2020-03-21 A | 20 | 100% |  |  | 张佳明 | 16h | 16h | 1,600 | 1,600 |
| 22 | 2.2 | **需求管理** | 101d | 2020-04-13 | 2020-08-07 |  |  |  | 25d |  | 2128h |  | 212,800 |  |
| 23 | 2.2.1 | 需求跟踪 | 101d | 2020-04-13 | 2020-08-07 | 26SS, 62FF |  |  | 25d | 张佳明; 任翔渝 | 1616h |  | 161,600 |  |
| 24 | 2.2.2 | 需求变更控制 | 32d | 2020-07-01 | 2020-08-06 | 54SS, 61FF |  |  | 26d | 张佳明; 任翔渝 | 512h |  | 51,200 |  |
| 25 | 2.3 | 需求规格说明书发布 | 1d | 2020-03-23 A | 2020-03-23 A | 21 | 100% |  |  | 张佳明 | 8h | 8h | 800 | 800 |

| ID | WBS | Task | Duration | Start | Finish | Predecessors | Total slack | Resources | Work | Cost |
| --- | --- | --- | --- | --- | --- | --- | --- | --- | --- | --- |
| 26 | 3 | **系统设计** | 21d | 2020-04-09 | 2020-05-02 | 16 | 0d |  | 504h | 50,400 |
| 27 | 3.1 | **总体设计** | 10d | 2020-04-09 | 2020-04-20 |  | 0d |  | 240h | 24,000 |
| 28 | 3.1.1 | 确定开发策略 | 2d | 2020-04-09 | 2020-04-10 |  | 0d | 刘震宇; 饶东来; 徐靖垚 | 48h | 4,800 |
| 29 | 3.1.2 | 确定开发规范 | 3d | 2020-04-11 | 2020-04-14 | 28 | 0d | 刘震宇; 饶东来; 徐靖垚 | 72h | 7,200 |
| 30 | 3.1.3 | 架构设计 | 5d | 2020-04-15 | 2020-04-20 | 29 | 0d | 刘震宇; 饶东来; 徐靖垚 | 120h | 12,000 |
| 31 | 3.2 | **详细设计** | 10d | 2020-04-21 | 2020-05-01 | 30 | 0d |  | 240h | 24,000 |
| 32 | 3.2.1 | 接口设计 | 2d | 2020-04-21 | 2020-04-22 |  | 0d | 刘震宇; 饶东来; 徐靖垚 | 48h | 4,800 |
| 33 | 3.2.2 | 模块设计 | 3d | 2020-04-23 | 2020-04-25 | 32 | 0d | 刘震宇; 饶东来; 徐靖垚 | 72h | 7,200 |
| 34 | 3.2.3 | 数据库设计 | 2d | 2020-04-27 | 2020-04-28 | 33 | 0d | 刘震宇; 饶东来; 徐靖垚 | 48h | 4,800 |
| 35 | 3.2.4 | 界面设计 | 3d | 2020-04-29 | 2020-05-01 | 34 | 0d | 刘震宇; 饶东来; 徐靖垚 | 72h | 7,200 |
| 36 | 3.3 | 设计文档发布 | 1d | 2020-05-02 | 2020-05-02 | 35 | 0d | 刘震宇; 饶东来; 徐靖垚 | 24h | 2,400 |
| 37 | 4 | **系统开发** | 83d | 2020-05-04 | 2020-08-07 | 36 | 0d |  | 1648h | 164,800 |
| 38 | 4.1 | **编码** | 82d | 2020-05-04 | 2020-08-06 |  | 0d |  | 1648h | 164,800 |
| 39 | 4.1.1 | **电脑端编码** | 50d | 2020-05-04 | 2020-06-30 |  | 0d |  | 968h | 96,800 |
| 40 | 4.1.1.1 | **前端开发** | 12d | 2020-05-04 | 2020-05-16 |  | 0d |  | 192h | 19,200 |
| 41 | 4.1.1.1.1 | 省用户界面 | 6d | 2020-05-04 | 2020-05-09 |  | 0d | 李金; 彭威 | 96h | 9,600 |
| 42 | 4.1.1.1.2 | 企业用户界面 | 6d | 2020-05-11 | 2020-05-16 | 41 | 0d | 李金; 彭威 | 96h | 9,600 |
| 43 | 4.1.1.2 | **数据库开发** | 9d | 2020-05-18 | 2020-05-27 | 40 | 0d |  | 144h | 14,400 |
| 44 | 4.1.1.2.1 | 相关表设计 | 3d | 2020-05-18 | 2020-05-20 |  | 0d | 饶东来; 彭威 | 48h | 4,800 |
| 45 | 4.1.1.2.2 | 相关视图设计 | 3d | 2020-05-21 | 2020-05-23 | 44 | 0d | 饶东来; 彭威 | 48h | 4,800 |
| 46 | 4.1.1.2.3 | 相关用户函数、触发器设计 | 3d | 2020-05-25 | 2020-05-27 | 45 | 0d | 饶东来; 彭威 | 48h | 4,800 |
| 47 | 4.1.1.3 | **服务器端开发** | 7d | 2020-05-28 | 2020-06-04 | 43 | 0d |  | 112h | 11,200 |
| 48 | 4.1.1.3.1 | 部署框架 | 4d | 2020-05-28 | 2020-06-01 |  | 0d | 冯开宇; 李金 | 64h | 6,400 |
| 49 | 4.1.1.3.2 | 部署数据库 | 3d | 2020-06-02 | 2020-06-04 | 48 | 0d | 冯开宇; 李金 | 48h | 4,800 |

| ID | WBS | Task | Duration | Start | Finish | Predecessors | Total slack | Resources | Work | Cost |
| --- | --- | --- | --- | --- | --- | --- | --- | --- | --- | --- |
| 50 | 4.1.1.4 | **后端开发** | 15d | 2020-06-05 | 2020-06-22 | 47 | 0d |  | 240h | 24,000 |
| 51 | 4.1.1.4.1 | 省用户后端逻辑 | 9d | 2020-06-05 | 2020-06-15 |  | 0d | 徐靖垚; 冯开宇 | 144h | 14,400 |
| 52 | 4.1.1.4.2 | 企业用户后端逻辑 | 6d | 2020-06-16 | 2020-06-22 | 51 | 0d | 徐靖垚; 冯开宇 | 96h | 9,600 |
| 53 | 4.1.1.5 | 系统集成 | 7d | 2020-06-23 | 2020-06-30 | 50 | 0d | 冯开宇; 李金; 彭威; 饶东来; 徐靖垚 | 280h | 28,000 |
| 54 | 4.1.2 | **手机端编码** | 32d | 2020-07-01 | 2020-08-06 | 53 | 0d |  | 680h | 68,000 |
| 55 | 4.1.2.1 | **前端开发** | 10d | 2020-07-01 | 2020-07-11 |  | 0d |  | 160h | 16,000 |
| 56 | 4.1.2.1.1 | 省用户界面 | 6d | 2020-07-01 | 2020-07-07 |  | 0d | 李金; 彭威 | 96h | 9,600 |
| 57 | 4.1.2.1.2 | 企业用户界面 | 4d | 2020-07-08 | 2020-07-11 | 56 | 0d | 李金; 彭威 | 64h | 6,400 |
| 58 | 4.1.2.2 | **后端开发** | 15d | 2020-07-13 | 2020-07-29 | 55 | 0d |  | 240h | 24,000 |
| 59 | 4.1.2.2.1 | 省用户后端逻辑 | 9d | 2020-07-13 | 2020-07-22 |  | 0d | 徐靖垚; 冯开宇 | 144h | 14,400 |
| 60 | 4.1.2.2.2 | 企业用户后端逻辑 | 6d | 2020-07-23 | 2020-07-29 | 59 | 0d | 徐靖垚; 冯开宇 | 96h | 9,600 |
| 61 | 4.1.2.3 | 系统集成 | 7d | 2020-07-30 | 2020-08-06 | 58 | 0d | 冯开宇; 李金; 彭威; 饶东来; 徐靖垚 | 280h | 28,000 |
| 62 | 4.2 | 代码复核 | 1d | 2020-08-07 | 2020-08-07 | 61 | 0d |  |  |  |
| 63 | 5 | **测试阶段** | 22d | 2020-08-08 | 2020-09-02 | 62 | 0d |  | 352h | 35,200 |
| 64 | 5.1 | 集成测试 | 5d | 2020-08-08 | 2020-08-13 |  | 0d | 张鉴昊; 张佳明 | 80h | 8,000 |
| 65 | 5.2 | 系统测试 | 5d | 2020-08-14 | 2020-08-19 | 64 | 0d | 张鉴昊; 张佳明 | 80h | 8,000 |
| 66 | 5.3 | 测试总结 | 4d | 2020-08-20 | 2020-08-24 | 65 | 0d | 张鉴昊; 张佳明 | 64h | 6,400 |
| 67 | 5.4 | 缺陷跟踪 | 4d | 2020-08-25 | 2020-08-28 | 66 | 0d | 张鉴昊; 张佳明 | 64h | 6,400 |
| 68 | 5.5 | 手册编写 | 3d | 2020-08-29 | 2020-09-01 | 67 | 0d | 张鉴昊; 张佳明 | 48h | 4,800 |
| 69 | 5.6 | 测试报告发布 | 1d | 2020-09-02 | 2020-09-02 | 68 | 0d | 张鉴昊; 张佳明 | 16h | 1,600 |
| 70 | 6 | **产品交付** | 3d | 2020-09-03 | 2020-09-05 | 69 | 0d |  | 64h | 6,400 |
| 71 | 6.1 | 验收测试 | 2d | 2020-09-03 | 2020-09-04 |  | 0d | 任翔渝; 张航 | 32h | 3,200 |
| 72 | 6.2 | 产品提交 | 1d | 2020-09-05 | 2020-09-05 | 71 | 0d | 任翔渝; 张航 | 16h | 1,600 |
| 73 | 6.3 | 用户手册提交 | 1d | 2020-09-05 | 2020-09-05 | 72SS | 0d | 任翔渝; 张航 | 16h | 1,600 |
